# LR1

Schedule from MS Project, 2021-03-01 to 2021-07-19, costs in ₽.
Команда разработчиков из 16 человек занимается созданием карты города на основе собственного модуля отображения. Проект должен быть завершен в течение 6 месяцев. Бюджет проекта: 50 000 рублей.

## Calendars

- Standard: Mon-Fri 08:00-12:00, 13:00-17:00; Sat-Sun off. Exceptions (off unless hours are given): 2021-03-08 (8 марта), 2021-05-03 (за 1 мая), 2021-05-10 (за 9 мая), 2021-06-14 (за 12 июня).

## Resources

| Resource | Group | Unit | Rate | Cost per use |
| --- | --- | --- | --- | --- |
| Ведущий программист | Программирование |  | 10 | 100 |
| Программист #1 | Программирование |  | 7 | 50 |
| Программист #2 | Программирование |  | 7 | 50 |
| Программист #3 | Программирование |  | 7 | 50 |
| Программист #4 | Программирование |  | 7 | 50 |
| Системный аналитик | Анализ |  | 20 | 300 |
| Художник-дизайнер | Дизайн |  | 8 | 70 |
| Технический писатель | Документация |  | 5 | 20 |
| Web-дизайнер | Internet |  | 7 | 50 |
| 3D аниматор | Дизайн |  | 8 | 70 |
| Мультимедиа-корреспондент | М-медиа |  | 3 | 20 |
| Наборщик данных #1 | Ввод данных |  | 2 | 10 |
| Наборщик данных #2 | Ввод данных |  | 2 | 10 |
| Наборщик данных #3 | Ввод данных |  | 2 | 10 |
| Наборщик данных #4 | Ввод данных |  | 2 | 10 |
| Наборщик данных #5 | Ввод данных |  | 2 | 10 |
| Аренда сервера |  | hour | 2 |  |
| Наборщик данных #6 | Ввод данных |  | 2 | 10 |
| Наборщик данных #7 | Ввод данных |  | 2 | 10 |
| Наборщик данных #8 | Ввод данных |  | 2 | 10 |
| Наборщик данных #9 | Ввод данных |  | 2 | 10 |
| Наборщик данных #10 | Ввод данных |  | 2 | 10 |

## Schedule

| ID | WBS | Task | Type | Duration | Start | Finish | Predecessors | Baseline start | Baseline finish | Baseline duration | Total slack | Free slack | Resources | Work | Cost | Baseline cost |
| --- | --- | --- | --- | --- | --- | --- | --- | --- | --- | --- | --- | --- | --- | --- | --- | --- |
| 1 | 1 | Начало проекта | milestone | 0w | 2021-03-01 08:00 | 2021-03-01 08:00 |  | 2021-03-01 08:00 | 2021-03-01 08:00 | 0w | 0d |  |  |  |  |  |
| 2 | 2 | **Анализ и проектирование** |  | 25.62d | 2021-03-01 08:00 | 2021-04-06 14:00 | 1 |  |  |  | 0d |  |  | 667h | 6,684 |  |
| 3 | 2.1 | **Построение базы объектов** |  | 10.25d | 2021-03-23 11:00 | 2021-04-06 14:00 |  |  |  |  | 26.12d |  | Аренда сервера [1 /hour] | 419h | 2,578 |  |
| 4 | 2.1.1 | Анализ и построение структуры базы объектов |  | 2w | 2021-03-23 11:00 | 2021-04-06 14:00 |  |  |  |  | 26.12d | 0d | Системный аналитик | 80h | 1,900 |  |
| 5 | 2.2 | Анализ и проектирование ядра |  | 3w | 2021-03-01 08:00 | 2021-03-23 11:00 |  | 2021-03-01 08:00 | 2021-03-23 11:00 | 3w | 0d |  | Ведущий программист; Системный аналитик | 240h | 4,000 | 4,000 |
| 6 | 2.3 | Разработка структуры сайта |  | 1d | 2021-03-01 08:00 | 2021-03-01 17:00 |  | 2021-06-11 08:31 | 2021-06-15 08:31 | 1d | 41.49d | 0d | Web-дизайнер | 8h | 106 | 106 |
| 7 | 3 | **Разработка дизайна** |  | 61.5d | 2021-03-01 08:00 | 2021-05-28 12:00 |  |  |  |  | 35.25d |  |  | 680h | 4,620 |  |
| 8 | 3.1 | Разработка дизайна сайта |  | 3w | 2021-03-02 08:00 | 2021-04-13 11:00 | 6 | 2021-06-15 08:31 | 2021-06-24 15:31 | 1.5w | 41.49d | 50.07d | Web-дизайнер; Художник-дизайнер; 3D аниматор | 120h | 1,110 | 1,110 |
| 9 | 3.2 | **Разработка дизайна интерфейса** |  | 30.62d | 2021-03-01 08:00 | 2021-04-13 14:00 |  | 2021-03-01 08:00 | 2021-04-06 14:00 | 25.62d | 35.25d | 0d |  | 320h | 2,770 | 2,770 |
| 10 | 3.2.1 | Разработка 2D графических элементов |  | 3w | 2021-03-01 08:00 | 2021-03-23 11:00 |  | 2021-03-01 08:00 | 2021-03-23 11:00 | 3w | 36.25d | 0d | Художник-дизайнер | 120h | 1,030 | 1,030 |
| 11 | 3.2.2 | Разработка 3D графических элементов |  | 2w | 2021-03-01 08:00 | 2021-03-16 10:00 | 10SS | 2021-03-01 08:00 | 2021-03-16 10:00 | 2w | 36.25d | 0d | 3D аниматор | 80h | 710 | 710 |
| 12 | 3.2.3 | Создание заставки |  | 3w | 2021-03-23 10:00 | 2021-04-13 14:00 | 11 | 2021-03-16 10:00 | 2021-04-06 14:00 | 3w | 35.25d | 38.12d | 3D аниматор | 120h | 1,030 | 1,030 |
| 13 | 3.3 | Создание мультимедиа – наполнения |  | 6w | 2021-04-13 14:00 | 2021-05-28 12:00 | 9 | 2021-04-06 14:00 | 2021-05-21 12:00 | 6w | 35.25d | 38.12d | Мультимедиа-корреспондент | 240h | 740 | 740 |
| 14 | 4 | **Разработка** |  | 66.57d | 2021-03-23 11:00 | 2021-06-28 16:31 |  |  |  |  | 0d |  |  | 6160h | 25,312.82 |  |
| 15 | 4.1 | **Программирование** |  | 63.69d | 2021-03-23 11:00 | 2021-06-24 08:31 |  |  |  |  | 0d |  |  | 2584h | 17,410.82 |  |
| 16 | 4.1.1 | **Построение базы объектов** |  | 15d | 2021-04-06 14:00 | 2021-04-27 14:00 |  |  |  |  | 26.12d |  | Аренда сервера [1 /hour] | 744h | 2,788 |  |
| 17 | 4.1.1.1 | Программирование средств обработки базы объектов |  | 3w | 2021-04-06 14:00 | 2021-04-27 14:00 | 4 | 2021-04-06 14:00 | 2021-04-27 14:00 | 3w | 26.12d | 0d | Программист #4; Программист #3 | 240h | 1,780 | 1,780 |
| 18 | 4.1.2 | Создание модели ядра |  | 2.03w | 2021-03-23 11:00 | 2021-04-06 13:02 | 5 | 2021-03-23 11:00 | 2021-04-06 13:02 | 2.03w | 0d |  | Программист #1; Ведущий программист; Программист #2; Программист #3; Программист #4 | 400h | 3,335.97 | 3,335.97 |
| 19 | 4.1.3 | Создание рабочей версии ядра |  | 8.21w | 2021-04-13 13:02 | 2021-06-11 13:31 | 26, 18 | 2021-04-13 13:02 | 2021-06-11 13:31 | 8.21w | 0d |  | Программист #1; Ведущий программист; Программист #2; Программист #3; Программист #4 | 1200h | 9,406.86 | 9,406.86 |
| 20 | 4.1.4 | Программирование интерфейса |  | 1.5w | 2021-06-11 13:31 | 2021-06-24 08:31 | 9, 19 | 2021-06-11 13:31 | 2021-06-24 08:31 | 1.5w | 0d |  | Программист #4; Программист #3; Программист #1; Программист #2 | 240h | 1,880 | 1,880 |
| 21 | 4.2 | **Наполнение** |  | 41.32d | 2021-04-27 14:00 | 2021-06-28 16:31 |  |  |  |  | 14.81d |  |  | 3576h | 7,902 |  |
| 22 | 4.2.1 | **Построение базы объектов** |  | 30d | 2021-04-27 14:00 | 2021-06-10 14:00 |  |  |  |  | 26.12d |  | Аренда сервера [1 /hour] | 3456h | 7,012 |  |
| 23 | 4.2.1.1 | Наполнение базы объектов |  | 6w | 2021-04-27 14:00 | 2021-06-10 14:00 | 17 | 2021-04-27 14:00 | 2021-06-10 14:00 | 6w | 26.12d |  | Наборщик данных #1; Наборщик данных #2; Наборщик данных #3; Наборщик данных #4; Наборщик данных #5; Наборщик данных #6; Наборщик данных #7; Наборщик данных #8; Наборщик данных #9; Наборщик данных #10 | 2400h | 4,900 | 4,900 |
| 24 | 4.2.2 | Наполнение сайта |  | 3w | 2021-06-04 13:31 | 2021-06-28 16:31 | 19FS-1w, 8 | 2021-06-24 15:31 | 2021-07-16 16:31 | 3w | 5.3d | 0d | Web-дизайнер | 120h | 890 | 890 |

| ID | WBS | Task | Type | Duration | Start | Finish | Predecessors | Baseline start | Baseline finish | Baseline duration | Total slack | Free slack | Constraint | Resources | Work | Cost | Baseline cost |
| --- | --- | --- | --- | --- | --- | --- | --- | --- | --- | --- | --- | --- | --- | --- | --- | --- | --- |
| 25 | 5 | **Тестирование** |  | 65.94d | 2021-04-06 13:02 | 2021-07-12 11:35 |  |  |  |  | 0d |  |  |  | 520h | 4,274.68 |  |
| 26 | 5.1 | Тестирование модели ядра |  | 1w | 2021-04-06 13:02 | 2021-04-13 13:02 | 18 | 2021-04-06 13:02 | 2021-04-13 13:02 | 1w | 0d |  |  | Программист #1 | 40h | 330 | 330 |
| 27 | 5.2 | Тестирование сайта |  | 2.88w | 2021-06-21 16:31 | 2021-07-12 11:35 | 24FS-1w | 2021-07-09 16:31 | 2021-07-28 14:24 | 2.55w | 5.3d | 0.24d |  | Ведущий программист; Программист #1; Программист #2; Программист #3; Программист #4 | 480h | 3,944.68 | 3,944.68 |
| 28 | 6 | **Документация** |  | 27.62d | 2021-06-09 09:00 | 2021-07-19 15:00 |  |  |  |  | 0d |  |  |  | 240h | 1,430 |  |
| 29 | 6.1 | **Создание руководства пользователя** |  | 17.38d | 2021-06-09 09:00 | 2021-07-05 12:00 |  |  |  |  | 10.25d |  |  |  | 160h | 1,010 |  |
| 30 | 6.1.1 | Разработка дизайна руководства |  | 1w | 2021-06-09 09:00 | 2021-06-17 10:00 | 20FS-10d | 2021-06-09 08:31 | 2021-06-17 11:31 | 1w | 10.25d | 0d |  | Художник-дизайнер | 40h | 390 | 390 |
| 31 | 6.1.2 | Написание руководства пользователя |  | 3w | 2021-06-11 09:00 | 2021-07-05 12:00 | 30SS+2d | 2021-06-11 08:31 | 2021-07-06 09:31 | 3w | 10.25d | 3d |  | Технический писатель | 120h | 620 | 620 |
| 32 | 6.2 | Создание справочной системы |  | 2w | 2021-07-05 13:00 | 2021-07-19 15:00 | 20 | 2021-07-06 09:31 | 2021-07-22 11:31 | 2w | 0d |  |  | Технический писатель | 80h | 420 | 420 |
| 33 | 7 | Сдача сайта в эксплуатацию | milestone | 0w | 2021-07-19 15:00 | 2021-07-19 15:00 | 27, 32, 31 | 2021-07-28 14:24 | 2021-07-28 14:24 | 0w | 0d | 14.55d |  |  |  |  |  |
| 34 | 8 | **Совещание** |  | 91.12d | 2021-03-03 08:00 | 2021-07-14 09:00 |  | 2021-03-03 08:00 | 2021-07-28 09:00 | 101.12d | 3.62d |  |  |  | 140h | 1,220 | 1,342 |
| 35 | 8.1 | Совещание 1 |  | 1h | 2021-03-03 08:00 | 2021-03-03 09:00 |  | 2021-03-03 08:00 | 2021-03-03 09:00 | 1h | 94.62d | 91d | start no earlier than 2021-03-03 08:00 | 3D аниматор; Web-дизайнер; Ведущий программист; Мультимедиа-корреспондент; Системный аналитик; Художник-дизайнер; Технический писатель | 7h | 61 | 61 |
| 36 | 8.2 | Совещание 2 |  | 1h | 2021-03-10 08:00 | 2021-03-10 09:00 |  | 2021-03-10 08:00 | 2021-03-10 09:00 | 1h | 90.62d | 87d | start no earlier than 2021-03-10 08:00 | 3D аниматор; Web-дизайнер; Ведущий программист; Мультимедиа-корреспондент; Системный аналитик; Художник-дизайнер; Технический писатель | 7h | 61 | 61 |
| 37 | 8.3 | Совещание 3 |  | 1h | 2021-03-17 08:00 | 2021-03-17 09:00 |  | 2021-03-17 08:00 | 2021-03-17 09:00 | 1h | 85.62d | 82d | start no earlier than 2021-03-17 08:00 | 3D аниматор; Web-дизайнер; Ведущий программист; Мультимедиа-корреспондент; Системный аналитик; Художник-дизайнер; Технический писатель | 7h | 61 | 61 |
| 38 | 8.4 | Совещание 4 |  | 1h | 2021-03-24 08:00 | 2021-03-24 09:00 |  | 2021-03-24 08:00 | 2021-03-24 09:00 | 1h | 80.62d | 77d | start no earlier than 2021-03-24 08:00 | 3D аниматор; Web-дизайнер; Ведущий программист; Мультимедиа-корреспондент; Системный аналитик; Художник-дизайнер; Технический писатель | 7h | 61 | 61 |
| 39 | 8.5 | Совещание 5 |  | 1h | 2021-03-31 08:00 | 2021-03-31 09:00 |  | 2021-03-31 08:00 | 2021-03-31 09:00 | 1h | 75.62d | 72d | start no earlier than 2021-03-31 08:00 | 3D аниматор; Web-дизайнер; Ведущий программист; Мультимедиа-корреспондент; Системный аналитик; Художник-дизайнер; Технический писатель | 7h | 61 | 61 |
| 40 | 8.6 | Совещание 6 |  | 1h | 2021-04-07 08:00 | 2021-04-07 09:00 |  | 2021-04-07 08:00 | 2021-04-07 09:00 | 1h | 70.62d | 67d | start no earlier than 2021-04-07 08:00 | 3D аниматор; Web-дизайнер; Ведущий программист; Мультимедиа-корреспондент; Системный аналитик; Художник-дизайнер; Технический писатель | 7h | 61 | 61 |
| 41 | 8.7 | Совещание 7 |  | 1h | 2021-04-14 08:00 | 2021-04-14 09:00 |  | 2021-04-14 08:00 | 2021-04-14 09:00 | 1h | 65.62d | 62d | start no earlier than 2021-04-14 08:00 | 3D аниматор; Web-дизайнер; Ведущий программист; Мультимедиа-корреспондент; Системный аналитик; Художник-дизайнер; Технический писатель | 7h | 61 | 61 |
| 42 | 8.8 | Совещание 8 |  | 1h | 2021-04-21 08:00 | 2021-04-21 09:00 |  | 2021-04-21 08:00 | 2021-04-21 09:00 | 1h | 60.62d | 57d | start no earlier than 2021-04-21 08:00 | 3D аниматор; Web-дизайнер; Ведущий программист; Мультимедиа-корреспондент; Системный аналитик; Художник-дизайнер; Технический писатель | 7h | 61 | 61 |
| 43 | 8.9 | Совещание 9 |  | 1h | 2021-04-28 08:00 | 2021-04-28 09:00 |  | 2021-04-28 08:00 | 2021-04-28 09:00 | 1h | 55.62d | 52d | start no earlier than 2021-04-28 08:00 | 3D аниматор; Web-дизайнер; Ведущий программист; Мультимедиа-корреспондент; Системный аналитик; Художник-дизайнер; Технический писатель | 7h | 61 | 61 |
| 44 | 8.10 | Совещание 10 |  | 1h | 2021-05-05 08:00 | 2021-05-05 09:00 |  | 2021-05-05 08:00 | 2021-05-05 09:00 | 1h | 51.62d | 48d | start no earlier than 2021-05-05 08:00 | 3D аниматор; Web-дизайнер; Ведущий программист; Мультимедиа-корреспондент; Системный аналитик; Художник-дизайнер; Технический писатель | 7h | 61 | 61 |
| 45 | 8.11 | Совещание 11 |  | 1h | 2021-05-12 08:00 | 2021-05-12 09:00 |  | 2021-05-12 08:00 | 2021-05-12 09:00 | 1h | 47.62d | 44d | start no earlier than 2021-05-12 08:00 | 3D аниматор; Web-дизайнер; Ведущий программист; Мультимедиа-корреспондент; Системный аналитик; Художник-дизайнер; Технический писатель | 7h | 61 | 61 |
| 46 | 8.12 | Совещание 12 |  | 1h | 2021-05-19 08:00 | 2021-05-19 09:00 |  | 2021-05-19 08:00 | 2021-05-19 09:00 | 1h | 42.62d | 39d | start no earlier than 2021-05-19 08:00 | 3D аниматор; Web-дизайнер; Ведущий программист; Мультимедиа-корреспондент; Системный аналитик; Художник-дизайнер; Технический писатель | 7h | 61 | 61 |
| 47 | 8.13 | Совещание 13 |  | 1h | 2021-05-26 08:00 | 2021-05-26 09:00 |  | 2021-05-26 08:00 | 2021-05-26 09:00 | 1h | 37.62d | 34d | start no earlier than 2021-05-26 08:00 | 3D аниматор; Web-дизайнер; Ведущий программист; Мультимедиа-корреспондент; Системный аналитик; Художник-дизайнер; Технический писатель | 7h | 61 | 61 |
| 48 | 8.14 | Совещание 14 |  | 1h | 2021-06-02 08:00 | 2021-06-02 09:00 |  | 2021-06-02 08:00 | 2021-06-02 09:00 | 1h | 32.62d | 29d | start no earlier than 2021-06-02 08:00 | 3D аниматор; Web-дизайнер; Ведущий программист; Мультимедиа-корреспондент; Системный аналитик; Художник-дизайнер; Технический писатель | 7h | 61 | 61 |
| 49 | 8.15 | Совещание 15 |  | 1h | 2021-06-09 08:00 | 2021-06-09 09:00 |  | 2021-06-09 08:00 | 2021-06-09 09:00 | 1h | 27.62d | 24d | start no earlier than 2021-06-09 08:00 | 3D аниматор; Web-дизайнер; Ведущий программист; Мультимедиа-корреспондент; Системный аналитик; Художник-дизайнер; Технический писатель | 7h | 61 | 61 |
| 50 | 8.16 | Совещание 16 |  | 1h | 2021-06-16 08:00 | 2021-06-16 09:00 |  | 2021-06-16 08:00 | 2021-06-16 09:00 | 1h | 23.62d | 20d | start no earlier than 2021-06-16 08:00 | 3D аниматор; Web-дизайнер; Ведущий программист; Мультимедиа-корреспондент; Системный аналитик; Художник-дизайнер; Технический писатель | 7h | 61 | 61 |
| 51 | 8.17 | Совещание 17 |  | 1h | 2021-06-23 08:00 | 2021-06-23 09:00 |  | 2021-06-23 08:00 | 2021-06-23 09:00 | 1h | 18.62d | 15d | start no earlier than 2021-06-23 08:00 | 3D аниматор; Web-дизайнер; Ведущий программист; Мультимедиа-корреспондент; Системный аналитик; Художник-дизайнер; Технический писатель | 7h | 61 | 61 |
| 52 | 8.18 | Совещание 18 |  | 1h | 2021-06-30 08:00 | 2021-06-30 09:00 |  | 2021-06-30 08:00 | 2021-06-30 09:00 | 1h | 13.62d | 10d | start no earlier than 2021-06-30 08:00 | 3D аниматор; Web-дизайнер; Ведущий программист; Мультимедиа-корреспондент; Системный аналитик; Художник-дизайнер; Технический писатель | 7h | 61 | 61 |
| 53 | 8.19 | Совещание 19 |  | 1h | 2021-07-07 08:00 | 2021-07-07 09:00 |  | 2021-07-07 08:00 | 2021-07-07 09:00 | 1h | 8.62d | 5d | start no earlier than 2021-07-07 08:00 | 3D аниматор; Web-дизайнер; Ведущий программист; Мультимедиа-корреспондент; Системный аналитик; Художник-дизайнер; Технический писатель | 7h | 61 | 61 |
| 54 | 8.20 | Совещание 20 |  | 1h | 2021-07-14 08:00 | 2021-07-14 09:00 |  | 2021-07-14 08:00 | 2021-07-14 09:00 | 1h | 3.62d | 0d | start no earlier than 2021-07-14 08:00 | 3D аниматор; Web-дизайнер; Ведущий программист; Мультимедиа-корреспондент; Системный аналитик; Художник-дизайнер; Технический писатель | 7h | 61 | 61 |
