# Rk1_z8_1

Schedule from MS Project, 2021-04-05 to 2021-06-22, costs in ₽.

## Calendars

- Standard: Mon-Fri 08:00-12:00, 13:00-17:00; Sat-Sun off. Exceptions (off unless hours are given): 2021-05-03 (Перенос выходного с 1 мая), 2021-05-10 (Перенос выходного с 9 мая), 2021-06-14 (Перенос выходного с 12 июня).

## Resources

| Resource | Group | Unit | Rate | Cost per use | Notes |
| --- | --- | --- | --- | --- | --- |
| Соколов | Программисты |  | 437.5 |  | Соколов является ведущим программистом |
| Соломин | Программисты |  | 343.75 |  |  |
| Тимофеев | Программисты |  | 312.5 |  |  |
| Яковлева | Программисты |  | 312.5 |  |  |
| Петров | Дизайнеры |  | 468.75 |  | Руководитель дизайнерской группы |
| Кузнецов | Дизайнеры |  | 312.5 |  |  |
| Фомина | Редактор сайта |  | 250 |  |  |
| Преподаватели | Преподаватели |  | 700 |  |  |
| Программное обеспечение | ПО |  | 30000 | 5000 |  |
| Картриджи для принтера | Расходные материалы | шт | 2500 |  |  |
| Бумага | Расходные материалы | пач | 200 |  |  |

## Schedule

| ID | WBS | Task | Type | Duration | Start | Finish | Predecessors | Total slack | Free slack | Resources | Work | Cost |
| --- | --- | --- | --- | --- | --- | --- | --- | --- | --- | --- | --- | --- |
| 1 | 1 | Начало проекта | milestone | 0d | 2021-04-05 | 2021-04-05 |  | 0d |  |  |  |  |
| 2 | 2 | Установка ПО |  | 15d | 2021-04-06 | 2021-04-26 | 1FS+1d | 0d |  | Программное обеспечение; Соколов | 120h | 87,500 |
| 3 | 3 | Обучение персонала |  | 17.14d | 2021-04-20 | 2021-05-17 | 2SS+10d | 0d |  | Преподаватели [400%]; Соломин; Тимофеев; Петров; Кузнецов; Яковлева; Картриджи для принтера [1 шт]; Бумага [0.02 пач]; Соколов | 1005.71h | 431,014.29 |
| 4 | 4 | **Разработка представительскиз сайтов** |  | 8d | 2021-05-17 | 2021-05-27 | 3 | 17d | 0d |  | 80h | 26,000 |
| 5 | 4.1 | **Разработка сайта 1** |  | 5d | 2021-05-17 | 2021-05-24 |  | 17d | 0d |  | 40h | 13,000 |
| 6 | 4.1.1 | Разработка дизайна сайта 1 |  | 2d | 2021-05-17 | 2021-05-19 |  | 17d | 0d | Кузнецов | 16h | 5,000 |
| 7 | 4.1.2 | Программирование сайта 1 |  | 3d | 2021-05-19 | 2021-05-24 | 6 | 17d |  | Тимофеев | 24h | 7,500 |
| 8 | 4.2 | **Разработка сайта 2** |  | 5d | 2021-05-20 | 2021-05-27 | 5FS-2d | 17d |  |  | 40h | 13,000 |
| 9 | 4.2.1 | Разработка дизайна сайта 2 |  | 2d | 2021-05-20 | 2021-05-24 |  | 17d | 0d | Кузнецов | 16h | 5,000 |
| 10 | 4.2.2 | Программирование сайта 2 |  | 3d | 2021-05-24 | 2021-05-27 | 9 | 17d |  | Тимофеев | 24h | 7,500 |
| 11 | 5 | Представительские сайты созданы | milestone | 0d | 2021-05-27 | 2021-05-27 | 4 | 17d |  |  |  |  |
| 12 | 6 | **Разработка корпоративного сайта** |  | 25d | 2021-05-17 | 2021-06-22 | 3 | 0d |  |  | 424h | 148,250 |
| 13 | 6.1 | Проектирование сайта |  | 5d | 2021-05-17 | 2021-05-24 |  | 0d |  | Соколов; Петров | 80h | 36,250 |
| 14 | 6.2 | Программирование сайта |  | 15d | 2021-05-24 | 2021-06-15 | 13 | 0d |  | Соломин; Яковлева | 240h | 79,750 |
| 15 | 6.3 | Наполнение сайта |  | 3d | 2021-06-09 | 2021-06-15 | 14FS-3d | 0d |  | Фомина | 24h | 6,000 |
| 16 | 6.4 | Тестирование сайта |  | 5d | 2021-06-15 | 2021-06-22 | 15 | 0d |  | Соломин; Яковлева | 80h | 26,250 |
| 17 | 7 | Сдача сайта заказчику | milestone | 0d | 2021-06-22 | 2021-06-22 | 16 | 0d |  |  |  |  |
